# test

Schedule from MS Project, 2009-01-20 to 2009-06-09, 7 hours a day.

## Calendars

- Standard: Mon-Fri 09:00-12:00, 14:00-18:00; Sat-Sun off.

## Resources

| Resource |
| --- |
| Equipe |
| Développeurs |
| Arnaud Guiheneuf |
| Florent Messa |
| Graphistes |
| Takumi Kobayashi |
| Constance Brulant |
| Thomas Poblete |

## Schedule

| ID | WBS | Task | Duration | Start | Finish | Predecessors | Total slack | Free slack | Resources | Work |
| --- | --- | --- | --- | --- | --- | --- | --- | --- | --- | --- |
| 1 | 1 | **Conception** | 66d | 2009-01-20 | 2009-04-21 |  | 0d |  |  | 476h |
| 2 | 1.1 | Elaboration d'un concept | 57d | 2009-01-20 | 2009-04-08 |  | 0d |  | Equipe | 399h |
| 3 | 1.2 | Recherche d'un nom de projet | 9d | 2009-04-09 | 2009-04-21 | 2 | 33d |  | Equipe | 63h |
| 4 | 1.3 | Mise en place d'un environnement de travail | 2d | 2009-04-09 | 2009-04-10 | 2 | 40d |  | Equipe | 14h |
| 5 | 2 | **Spécifications fonctionnelles** | 9d | 2009-04-09 | 2009-04-21 |  | 0d |  |  | 63h |
| 6 | 2.1 | Recherche des fonctionnalités | 4d | 2009-04-09 | 2009-04-14 | 2 | 0d |  | Equipe | 28h |
| 7 | 2.2 | Scénarios utilisateurs | 3d | 2009-04-15 | 2009-04-17 | 6 | 0d |  | Equipe | 21h |
| 8 | 2.3 | Zoning | 2d | 2009-04-20 | 2009-04-21 | 7 | 0d |  | Equipe | 14h |
| 9 | 3 | **Spécifications techniques** | 3d | 2009-04-22 | 2009-04-24 | 5 | 24.5d | 0d |  | 56h |
| 10 | 3.1 | **Etude des solutions existantes** | 1d | 2009-04-22 | 2009-04-22 |  | 26.5d |  | Développeurs | 14h |
| 11 | 3.1.1 | Documentation sur OpenZoom | 1d | 2009-04-22 | 2009-04-22 |  | 18.5d |  | Arnaud Guiheneuf | 7h |
| 12 | 3.2 | Documentation sur Django (framework Python) | 1d | 2009-04-22 | 2009-04-22 |  | 18.5d |  | Florent Messa | 7h |
| 13 | 3.3 | Documentation sur PIL (librarie de manipulation d'images) | 1d | 2009-04-22 | 2009-04-22 |  | 18.5d |  | Florent Messa | 7h |
| 14 | 3.4 | Documentation sur pyAMF (passerelle entre Flash et Python) | 1d | 2009-04-22 | 2009-04-22 |  | 18.5d |  | Florent Messa | 7h |
| 15 | 3.5 | Diagramme de cas d'utilisations | 1d | 2009-04-22 | 2009-04-22 | 8 | 16.5d | 0d | Développeurs | 7h |
| 16 | 3.6 | Diagramme de classes | 1d | 2009-04-23 | 2009-04-23 | 15 | 16.5d | 0d | Développeurs | 7h |
| 17 | 3.7 | Diagramme de base de données | 1d | 2009-04-24 | 2009-04-24 | 16 | 16.5d |  | Florent Messa | 7h |
| 18 | 4 | **Développement** | 24d | 2009-04-22 | 2009-05-25 | 5 | 0d |  |  | 715.4h |
| 19 | 4.1 | **Créations graphiques** | 11d | 2009-04-22 | 2009-05-06 |  | 13d |  |  | 84h |
| 20 | 4.1.1 | **Recherche de logos** | 9d | 2009-04-22 | 2009-05-04 |  | 13d |  |  | 63h |
| 21 | 4.1.1.1 | Recherche des pistes | 6d | 2009-04-22 | 2009-04-29 |  | 16d | 0d | Graphistes | 42h |
| 22 | 4.1.1.2 | Mise en commun des pistes | 2d | 2009-04-30 | 2009-05-01 | 21 | 16d | 0d | Graphistes | 14h |
| 23 | 4.1.1.3 | Choix d'un logo type | 1d | 2009-05-04 | 2009-05-04 | 22 | 16d | 0d | Graphistes | 7h |
| 24 | 4.1.2 | **Finalisation du logo** | 2d | 2009-05-05 | 2009-05-06 | 23 | 13d |  |  | 21h |
| 25 | 4.1.2.1 | Adapation en pixels | 1d | 2009-05-05 | 2009-05-05 |  | 16d | 0d | Graphistes | 7h |
| 26 | 4.1.2.2 | Elaboration des vignettes | 1d | 2009-05-06 | 2009-05-06 | 25 | 16d |  | Graphistes | 7h |
| 27 | 4.1.2.3 | Elaboration des miniatures | 1d | 2009-05-06 | 2009-05-06 | 25 | 16d |  | Graphistes | 7h |

| ID | WBS | Task | Duration | Start | Finish | Predecessors | Total slack | Free slack | Resources | Work |
| --- | --- | --- | --- | --- | --- | --- | --- | --- | --- | --- |
| 28 | 4.2 | **Maquettage** | 24d | 2009-04-22 | 2009-05-25 |  | 0d |  |  | 189h |
| 29 | 4.2.1 | Recherche des pistes | 10d | 2009-04-22 | 2009-05-05 |  | 0d |  |  |  |
| 30 | 4.2.2 | Recherche de ton graphique | 10d | 2009-04-22 | 2009-05-05 |  | 0d |  | Graphistes | 70h |
| 31 | 4.2.3 | Mise en commun des pistes | 2d | 2009-05-06 | 2009-05-07 | 29, 30 | 0d |  |  |  |
| 32 | 4.2.4 | Essais de navigation | 2d | 2009-05-08 | 2009-05-11 | 31 | 13d |  | Graphistes | 14h |
| 33 | 4.2.5 | Positionnement des contenus | 2d | 2009-05-08 | 2009-05-11 | 31 | 0d |  | Graphistes | 14h |
| 34 | 4.2.6 | Validation des pistes graphiques | 1d | 2009-05-12 | 2009-05-12 | 33 | 0d |  | Equipe | 7h |
| 35 | 4.2.7 | Déclinaison des planches graphiques | 2d | 2009-05-13 | 2009-05-14 | 34 | 0d |  | Takumi Kobayashi | 14h |
| 36 | 4.2.8 | **Design des rubriques** | 5d | 2009-05-15 | 2009-05-21 |  | 0d |  |  | 35h |
| 37 | 4.2.8.1 | WHO | 1d | 2009-05-15 | 2009-05-15 | 35 | 0d |  | Takumi Kobayashi | 7h |
| 38 | 4.2.8.2 | ABOUT | 1d | 2009-05-18 | 2009-05-18 | 37 | 0d |  | Takumi Kobayashi | 7h |
| 39 | 4.2.8.3 | ACCOUNT | 1d | 2009-05-19 | 2009-05-19 | 38 | 0d |  | Takumi Kobayashi | 7h |
| 40 | 4.2.8.4 | ISSUE (rubrique globale) | 1d | 2009-05-20 | 2009-05-20 | 39 | 0d |  | Takumi Kobayashi | 7h |
| 41 | 4.2.8.5 | ISSUE en cours | 1d | 2009-05-21 | 2009-05-21 | 40 | 0d |  | Takumi Kobayashi | 7h |
| 42 | 4.2.9 | Design des éléments génériques | 4d | 2009-05-15 | 2009-05-20 | 35 | 6d |  |  |  |
| 43 | 4.2.10 | Invitation | 1d | 2009-04-22 | 2009-04-22 |  | 21d |  | Constance Brulant | 7h |
| 44 | 4.2.11 | Prototype de newsletter | 2d | 2009-04-22 | 2009-04-23 |  | 23d | 20d | Constance Brulant | 14h |
| 45 | 4.2.12 | Finalisation | 2d | 2009-05-22 | 2009-05-25 | 36, 43, 44 | 0d |  | Graphistes | 14h |
| 46 | 4.3 | **Mise en œuvre des intéractions utilisateurs** | 18.5d | 2009-04-22 | 2009-05-18 |  | 5.5d |  |  | 182h |
| 47 | 4.3.1 | **Elaboration de la grille** | 13.5d | 2009-04-22 | 2009-05-11 |  | 5.5d | 0d |  | 108.5h |
| 48 | 4.3.1.1 | Affichage d'ensemble de la grille | 1d | 2009-04-22 | 2009-04-22 |  | 8.5d | 0d | Arnaud Guiheneuf | 7h |
| 49 | 4.3.1.2 | **Création des cases** | 6.5d | 2009-04-23 | 2009-05-01 | 48 | 5.5d | 0d |  | 59.5h |
| 50 | 4.3.1.2.1 | **Cases ouvertes à la reservation** | 4d | 2009-04-23 | 2009-04-28 |  | 5.5d | 0d |  | 31.5h |
| 51 | 4.3.1.2.1.1 | Processus de réservation | 1d | 2009-04-23 | 2009-04-23 |  | 8.5d | 0d | Arnaud Guiheneuf | 7h |
| 52 | 4.3.1.2.1.2 | Téléchargement du template | 1d | 2009-04-24 | 2009-04-24 | 51 | 8.5d | 0d | Arnaud Guiheneuf | 7h |
| 53 | 4.3.1.2.1.3 | Module de transfert d'une œuvre | 2d | 2009-04-27 | 2009-04-28 | 52 | 8.5d |  | Thomas Poblete | 14h |
| 54 | 4.3.1.2.1.4 | Intégration du texte explicatif de l'issue en cours | 0.5d | 2009-04-23 | 2009-04-23 |  | 12d |  | Thomas Poblete | 3.5h |

| ID | WBS | Task | Duration | Start | Finish | Predecessors | Total slack | Free slack | Resources | Work |
| --- | --- | --- | --- | --- | --- | --- | --- | --- | --- | --- |
| 55 | 4.3.1.2.2 | **Cases reservées** | 1d | 2009-04-29 | 2009-04-29 | 50 | 5.5d | 0d |  | 14h |
| 56 | 4.3.1.2.2.1 | Affiliation d'une case à son détenteur | 1d | 2009-04-29 | 2009-04-29 |  | 8.5d |  | Arnaud Guiheneuf | 7h |
| 57 | 4.3.1.2.2.2 | Annulation d'une réservation | 1d | 2009-04-29 | 2009-04-29 |  | 8.5d |  | Arnaud Guiheneuf | 7h |
| 58 | 4.3.1.2.3 | **Cases remplies** | 1.5d | 2009-04-30 | 2009-05-01 | 55 | 5.5d |  |  | 14h |
| 59 | 4.3.1.2.3.1 | Affichage des miniatures | 1d | 2009-04-30 | 2009-04-30 |  | 8.5d | 0d | Arnaud Guiheneuf | 7h |
| 60 | 4.3.1.2.3.2 | Gestion des chargements d'images | 0.5d | 2009-05-01 | 2009-05-01 | 59 | 8.5d |  | Arnaud Guiheneuf | 3.5h |
| 61 | 4.3.1.2.3.3 | Mise en œuvre des cases désactivées | 0.5d | 2009-04-30 | 2009-04-30 |  | 9.5d |  | Arnaud Guiheneuf | 3.5h |
| 62 | 4.3.1.3 | **Elaboration des principes de navigation** | 6d | 2009-05-01 | 2009-05-11 | 49 | 5.5d |  |  | 42h |
| 63 | 4.3.1.3.1 | Zoom au sein de la grille | 3d | 2009-05-01 | 2009-05-06 |  | 5.5d | 0d | Arnaud Guiheneuf | 21h |
| 64 | 4.3.1.3.2 | Navigation clavier/souris | 2d | 2009-05-06 | 2009-05-08 | 63 | 5.5d | 0d | Arnaud Guiheneuf | 14h |
| 65 | 4.3.1.3.3 | Bouton aide à la navigation | 1d | 2009-05-08 | 2009-05-11 | 64 | 5.5d |  | Arnaud Guiheneuf | 7h |
| 66 | 4.3.2 | Optimisation cache | 5d | 2009-05-11 | 2009-05-18 | 47 | 5.5d |  | Développeurs | 35h |
| 67 | 4.3.3 | Intégration du flux RSS des nouvelles créations | 0.5d | 2009-05-08 | 2009-05-08 | 94 | 14.5d |  | Arnaud Guiheneuf | 3.5h |
| 68 | 4.3.4 | Système de pop-ins | 2d | 2009-04-22 | 2009-04-23 |  | 25d |  | Thomas Poblete | 14h |
| 69 | 4.3.5 | Bouton description de l'issue | 1d | 2009-04-22 | 2009-04-22 |  | 26d |  | Arnaud Guiheneuf | 7h |
| 70 | 4.3.6 | **Elaboration des ressources pour le publique** | 2d | 2009-04-22 | 2009-04-23 |  | 22d |  |  | 14h |
| 71 | 4.3.6.1 | Système de propagation | 2d | 2009-04-22 | 2009-04-23 |  | 25d |  | Thomas Poblete | 14h |
| 72 | 4.4 | **Base de données** | 14d | 2009-04-22 | 2009-05-11 |  | 4d |  |  | 155.4h |
| 73 | 4.4.1 | Intégrer la base de données | 1d | 2009-04-22 | 2009-04-22 |  | 7d | 0d | Florent Messa | 7h |
| 74 | 4.4.2 | Demande de contact | 1d | 2009-04-23 | 2009-04-23 | 73 | 7d | 0d | Florent Messa | 7h |
| 75 | 4.4.3 | **Gestion du compte utilisateur** | 2d | 2009-04-24 | 2009-04-27 | 74 | 4d | 0d |  | 21h |
| 76 | 4.4.3.1 | Se connecter | 1d | 2009-04-24 | 2009-04-24 |  | 7d | 0d | Florent Messa | 7h |
| 77 | 4.4.3.2 | Se déconnecter | 0.5d | 2009-04-27 | 2009-04-27 | 76 | 7.5d |  | Florent Messa | 3.5h |
| 78 | 4.4.3.3 | Changer son mot de passe | 0.5d | 2009-04-27 | 2009-04-27 | 76 | 7.5d |  | Florent Messa | 3.5h |
| 79 | 4.4.3.4 | Changer son adresse e-mail (revalidation de son compte via email) | 1d | 2009-04-27 | 2009-04-27 | 76 | 7d |  | Florent Messa | 7h |

| ID | WBS | Task | Duration | Start | Finish | Predecessors | Total slack | Free slack | Resources | Work |
| --- | --- | --- | --- | --- | --- | --- | --- | --- | --- | --- |
| 80 | 4.4.4 | **Gestion du profil** | 2d | 2009-04-28 | 2009-04-29 | 75 | 4d | 0d |  | 24.5h |
| 81 | 4.4.4.1 | Envoyer une invitation | 1d | 2009-04-28 | 2009-04-28 | 76 | 4d | 0d | Florent Messa | 7h |
| 82 | 4.4.4.2 | S'inscrire sur le site grâce à un code d'invitation | 1d | 2009-04-29 | 2009-04-29 | 81 | 7d |  | Florent Messa | 7h |
| 83 | 4.4.4.3 | Editer son profil | 1d | 2009-04-28 | 2009-04-28 |  | 7.5d | 0d | Florent Messa | 7h |
| 84 | 4.4.4.4 | Supprimer son profil | 0.5d | 2009-04-29 | 2009-04-29 | 83 | 7.5d |  | Florent Messa | 3.5h |
| 85 | 4.4.5 | **Gérer ses créations** | 6d | 2009-04-30 | 2009-05-07 | 80 | 4d | 0d |  | 50.4h |
| 86 | 4.4.5.1 | Réserver une case | 1d | 2009-04-30 | 2009-04-30 |  | 4d | 0d | Florent Messa | 7h |
| 87 | 4.4.5.2 | Découpage des cases voisines | 1d | 2009-05-01 | 2009-05-01 | 86 | 10d | 0d | Florent Messa | 7h |
| 88 | 4.4.5.3 | Création du template | 1d | 2009-05-04 | 2009-05-04 | 87 | 10d |  | Florent Messa | 7h |
| 89 | 4.4.5.4 | **Transfert d'une création** | 4.5d | 2009-05-01 | 2009-05-07 | 86 | 4d | 0d |  | 28h |
| 90 | 4.4.5.4.1 | Processus de transfert | 0.5d | 2009-05-01 | 2009-05-01 |  | 7d | 0d |  |  |
| 91 | 4.4.5.4.2 | Redécoupage du fichier uploadé pour créer l'oeuvre à rattaché | 2d | 2009-05-01 | 2009-05-05 | 90 | 4d | 0d | Florent Messa | 14h |
| 92 | 4.4.5.4.3 | Génération des miniatures à divers palliers (Basse définition et Haute définition) | 2d | 2009-05-05 | 2009-05-07 | 91 | 4d |  | Florent Messa | 14h |
| 93 | 4.4.5.5 | Accéder aux créations | 0.2d | 2009-05-07 | 2009-05-07 | 89 | 4d | 0d | Florent Messa | 1.4h |
| 94 | 4.4.5.6 | Flux RSS des nouvelles créations | 0.3d | 2009-05-07 | 2009-05-07 | 93 | 4d | 0d |  |  |
| 95 | 4.4.6 | Accéder à la liste des participants | 0.5d | 2009-04-30 | 2009-04-30 | 75, 80 | 20.5d |  | Florent Messa | 3.5h |
| 96 | 4.4.7 | Accéder à la liste des cases pour générer la grille | 1d | 2009-05-08 | 2009-05-08 | 85 | 13d | 0d | Florent Messa | 7h |
| 97 | 4.4.8 | Accéder à la liste des issues | 1d | 2009-05-11 | 2009-05-11 | 96 | 13d |  | Florent Messa | 7h |
| 98 | 4.4.9 | Gestionnaire des notifications | 2d | 2009-04-30 | 2009-05-01 | 80 | 19d |  | Florent Messa | 14h |
| 99 | 4.4.10 | Echeances de reservation d'une case (CRON) | 2d | 2009-05-08 | 2009-05-11 | 85 | 13d |  | Florent Messa | 14h |
| 100 | 4.5 | Editer une base HTML avant l'intégration avec le Flash | 7d | 2009-04-22 | 2009-04-30 |  | 13d | 6d | Florent Messa | 49h |
| 101 | 4.6 | Tests unitaires | 1d | 2009-05-08 | 2009-05-08 | 75, 80, 85 | 7d | 0d | Florent Messa | 7h |
| 102 | 4.7 | Editer les fichiers passerelle | 5d | 2009-05-11 | 2009-05-15 | 101, 100 | 7d | 0d | Florent Messa | 35h |
| 103 | 4.8 | Tests d'intégration | 2d | 2009-05-18 | 2009-05-19 | 102 | 7d |  | Développeurs | 14h |

| ID | WBS | Task | Duration | Start | Finish | Predecessors | Total slack | Free slack | Constraint | Resources | Work |
| --- | --- | --- | --- | --- | --- | --- | --- | --- | --- | --- | --- |
| 104 | 5 | **Conception éditoriale** | 7.5d | 2009-04-27 | 2009-05-06 | 9 | 24.5d |  |  |  | 98h |
| 105 | 5.1 | E-mailing d'invitation | 0.5d | 2009-04-27 | 2009-04-27 |  | 23.5d |  |  | Thomas Poblete | 3.5h |
| 106 | 5.2 | **Elaboration des rubriques** | 4d | 2009-04-27 | 2009-04-30 |  | 24.5d | 0d |  | Thomas Poblete | 56h |
| 107 | 5.2.1 | ABOUT | 1d | 2009-04-27 | 2009-04-27 |  | 16.5d | 0d |  | Thomas Poblete | 7h |
| 108 | 5.2.2 | HOME | 1d | 2009-04-28 | 2009-04-28 | 107 | 16.5d | 0d |  | Thomas Poblete | 7h |
| 109 | 5.2.3 | ISSUE | 1d | 2009-04-29 | 2009-04-29 | 108 | 16.5d | 0d |  | Thomas Poblete | 7h |
| 110 | 5.2.4 | CONTACT | 1d | 2009-04-30 | 2009-04-30 | 109 | 16.5d |  |  | Thomas Poblete | 7h |
| 111 | 5.3 | Conception de la newsletter | 0.5d | 2009-05-01 | 2009-05-01 | 106 | 16.5d | 0d |  | Thomas Poblete | 3.5h |
| 112 | 5.4 | Elaboration des conditions générales d'utilisation (CGU) | 1d | 2009-05-01 | 2009-05-04 | 111 | 24.5d | 0d |  | Equipe | 7h |
| 113 | 5.5 | Rubrique "mentions légales" | 1d | 2009-05-04 | 2009-05-05 | 112 | 24.5d | 0d |  | Thomas Poblete | 7h |
| 114 | 5.6 | Rubrique "crédits" | 1d | 2009-05-05 | 2009-05-06 | 113 | 24.5d |  |  | Equipe | 7h |
| 115 | 5.7 | Internationalisation des contenus | 2d | 2009-04-27 | 2009-04-28 |  | 30d |  |  | Equipe | 14h |
| 116 | 6 | Intégration de la charte graphique | 5d | 2009-05-26 | 2009-06-01 | 18 | 0d |  |  |  |  |
| 117 | 7 | Recettage de la plateforme | 2d | 2009-06-02 | 2009-06-03 | 116 | 0d |  |  | Equipe | 14h |
| 118 | 8 | Mise en production | 2d | 2009-06-04 | 2009-06-05 | 117 | 0d |  |  | Equipe | 14h |
| 119 | 9 | **Génération de "buzz" autour du projet** | 2d | 2009-06-08 | 2009-06-09 | 118 | 0d |  |  |  | 28h |
| 120 | 9.1 | Listage les parrains | 1d | 2009-06-08 | 2009-06-08 |  | 0d |  |  | Graphistes | 7h |
| 121 | 9.2 | Demarchage des parrains | 1d | 2009-06-09 | 2009-06-09 | 120 | 0d |  |  | Graphistes | 7h |
| 122 | 9.3 | Listage des sites | 1d | 2009-06-08 | 2009-06-08 |  | 0d |  |  | Equipe | 7h |
| 123 | 9.4 | Demarchage des sites | 1d | 2009-06-09 | 2009-06-09 | 122 | 0d |  |  | Equipe | 7h |
| 124 | 10 | **Elaboration du dossier de conception** | 20d | 2009-05-11 | 2009-06-05 |  | 2d |  |  |  | 140h |
| 125 | 10.1 | Rassemblement des ressources | 3d | 2009-05-11 | 2009-05-13 |  | 2d | 0d | start no earlier than 2009-05-11 | Constance Brulant | 21h |
| 126 | 10.2 | Rédaction | 10d | 2009-05-14 | 2009-05-27 | 125 | 2d | 0d |  | Equipe | 70h |
| 127 | 10.3 | Relecture globale | 1d | 2009-05-28 | 2009-05-28 | 126 | 2d | 0d |  | Equipe | 7h |
| 128 | 10.4 | Miise en forme du texte | 2d | 2009-05-29 | 2009-06-01 | 127 | 2d | 0d |  | Constance Brulant | 14h |
| 129 | 10.5 | Conception de la mise en page | 2d | 2009-06-02 | 2009-06-03 | 128 | 2d | 0d |  | Takumi Kobayashi | 14h |
| 130 | 10.6 | Impression finale | 2d | 2009-06-04 | 2009-06-05 | 129 | 2d |  |  | Equipe | 14h |
